# 船厂智能监控项目

Schedule from a web Gantt chart, 2026-05-20 to 2026-06-11.
Saturdays and Sundays are off

## Schedule

| ID | WBS | Task | Duration | Start | Finish | Predecessors | inPeople | Status |
| --- | --- | --- | --- | --- | --- | --- | --- | --- |
| 2 | 1 | 系统总体设计方案编写 | 2d | 2026-05-20 | 2026-05-21 |  | 陈建炜 |  |
| 3 | 2 | 系统总体设计方案评审 | 1d | 2026-05-22 | 2026-05-22 |  | 陈建炜、贺文飞 |  |
| 4 | 3 | 测试环境硬件准备（摄像头采购及安装、GPU服务器准备） | 6d | 2026-05-25 | 2026-06-01 |  | 刘欢、张春林 |  |
| 5 | 4 | 测试环境基础环境搭建（关系型数据库、向量数据库、对象存储、缓存数据库搭建） | 2d | 2026-05-25 | 2026-05-26 |  |  |  |
| 6 | 5 | 后端系统框架以及表结构创建 | 1d | 2026-05-27 | 2026-05-27 |  |  |  |
| 7 | 6 | 桌面应用设计 | 2d | 2026-05-25 | 2026-05-26 |  |  |  |
| 8 | 7 | 设备管理页面开发 | 3d | 2026-05-27 | 2026-05-29 | 7 |  | waiting |
| 9 | 8 | 事件告警页面开发 | 3d | 2026-06-01 | 2026-06-03 | 8 |  | waiting |
| 10 | 9 | 配置管理页面开发 | 3d | 2026-06-04 | 2026-06-08 | 9 |  | waiting |
| 11 | 10 | 记录管理页面开发 | 3d | 2026-06-09 | 2026-06-11 | 10 |  | waiting |
| 12 | 11 | 后端功能详细设计 | 2d | 2026-05-25 | 2026-05-26 |  |  |  |
| 13 | 12 | 设备管理相关功能后端开发 | 3d | 2026-05-27 | 2026-05-29 | 12 |  | waiting |
| 14 | 13 | 事件告警相关功能后端开发 | 3d | 2026-06-01 | 2026-06-03 | 13 |  | waiting |
| 15 | 14 | 配置管理相关功能后端开发 | 3d | 2026-06-04 | 2026-06-08 | 14 |  | waiting |
| 16 | 15 | 记录管理相关功能后端开发 | 3d | 2026-06-09 | 2026-06-11 | 15 |  | waiting |
| 17 | 16 | 智能分析功能详细设计 | 2d | 2026-05-27 | 2026-05-28 |  |  |  |
| 18 | 17 | 视频流获取功能开发 | 1d | 2026-05-29 | 2026-05-29 | 17 |  | waiting |
| 19 | 18 | 人员检测跟踪以及身份识别功能开发 | 4d | 2026-06-01 | 2026-06-04 | 18 |  | waiting |
| 20 | 19 | 人员进出监控与在岗状态功能开发 | 1d | 2026-06-05 | 2026-06-05 | 19 |  | waiting |
| 21 | 20 | 电子围栏与越界管理功能开发 | 1d | 2026-06-08 | 2026-06-08 | 20 |  | waiting |
| 22 | 21 | 班组点名与人员统计功能开发 | 1d | 2026-06-09 | 2026-06-09 | 21 |  | waiting |
